# Project1 - 00H15 - 29Out2023

How a schedule from MS Project changed from version to version. A marks actual dates.

## Version 1 (data date 2023-08-01, saved 2024-01-19, file MS Project - Eletroártica - Projeto Final de GP - 0%.mpp)

| ID | WBS | Task | Duration | Start | Finish | Predecessors | Total float | Constraint |
| --- | --- | --- | --- | --- | --- | --- | --- | --- |
| 1 | 1 | **Projeto de Desenvolvimento de um Site - Eletroártica:** | 316d | 2023-08-08 A | 2024-06-30 |  | 0d |  |
| 2 | 1.1 | **Requisitos e Plano de Projeto:** | 119d | 2023-08-08 | 2023-12-07 |  | 7d |  |
| 3 | 1.1.1 | **Levantamento de Requisitos** | 0.5d | 2023-08-08 | 2023-08-08 |  | 28.38d |  |
| 4 |  | Coleta de requisitos detalhados do cliente, incluindo funcionalidades, integrações e requisitos de segurança. | 0.5d | 2023-08-08 | 2023-08-08 |  | 28.38d | start no earlier than 2023-08-08 |
| 5 | 1.1.2 | **Análise Inicial de Requisitos** | 9d | 2023-08-17 | 2023-08-25 | 3 | 19.88d |  |
| 6 |  | Analise de requisitos iniciais enviados pelo cliente para entender as necessidades do projeto. | 7d | 2023-08-17 | 2023-08-25 | 4 | 19.88d | finish no earlier than 2023-08-25 |
| 7 | 1.1.3 | **Definição de Requisitos Prioritários** | 4.12d | 2023-08-28 | 2023-09-01 | 5 | 17.88d |  |
| 8 |  | Identificação e priorização dos requisitos específicos a serem abordados. | 4.12d | 2023-08-28 | 2023-09-01 | 5 | 17.88d | start no earlier than 2023-08-28 |
| 9 | 1.1.4 | **Definição da Estrutura** | 10d | 2023-09-04 | 2023-09-13 | 7 | 15d |  |
| 10 |  | Detalhamento do projeto, incluindo funcionalidades, recursos e limitações. | 8d | 2023-09-04 | 2023-09-13 | 7 | 15d | start no earlier than 2023-09-04 |
| 11 | 1.1.5 | **Identificação da Partes Interessadas** | 14d | 2023-09-14 | 2023-09-27 | 9 | 15d |  |
| 12 |  | Identificação das partes interessadas no projeto, incluindo o cliente e outros envolvidos. | 10d | 2023-09-14 | 2023-09-27 | 9 | 15d | finish no earlier than 2023-09-27 |
| 13 | 1.1.6 | **Estabelecimento do Orçamento** | 9d | 2023-10-02 | 2023-10-11 | 11 | 11d |  |
| 14 |  | Definição do orçamento do projeto com base nos requisitos do cliente. | 7d | 2023-10-02 | 2023-10-11 | 11 | 11d | start no earlier than 2023-10-02 |
| 15 | 1.1.7 | **Elaboração do Plano de Projeto** | 16d | 2023-10-12 | 2023-10-27 | 13 | 11d |  |
| 16 |  | Criação de um plano de projeto detalhado que inclui cronograma, orçamento e recursos. | 14d | 2023-10-12 | 2023-10-27 | 13 | 11d | start no earlier than 2023-10-12 |
| 17 | 1.1.8 | **Elaboração de Documentação Inicial** | 9d | 2023-10-30 | 2023-11-08 | 15 | 9d |  |
| 18 |  | Início da criação da documentação necessária para a entrega da solução. | 7d | 2023-10-30 | 2023-11-08 | 15 | 9d | finish no earlier than 2023-11-08 |
| 19 | 1.1.9 | **Desenvolvimento do Plano de Projeto** | 16d | 2023-11-09 | 2023-11-24 | 17 | 9d |  |
| 20 |  | Revisão do plano de projeto com a equipa e ajustes conforme necessário. | 12d | 2023-11-09 | 2023-11-24 | 17 | 9d | start no earlier than 2023-11-09 |
| 21 | 1.1.10 | **Submissão do Plano de Projeto** | 10d | 2023-11-27 | 2023-12-07 | 19 | 7d |  |
| 22 |  | Submissão do plano de projeto ao cliente para revisão e aprovação. | 8d | 2023-11-27 | 2023-12-07 | 19 | 7d | finish no earlier than 2023-12-07 |
| 23 | 1.2 | **Aprovação do Plano de Projeto:** | 0d | 2023-12-15 | 2023-12-15 | 21 | 0d |  |
| 24 |  | Recebimento da aprovação formal do cliente sobre o plano de projeto. | 0d | 2023-12-15 | 2023-12-15 | 21 | 0d | start no earlier than 2023-12-11 |
| 25 | 1.3 | **Formação de Pessoal:** | 11d | 2023-12-18 A | 2023-12-29 | 23 | 0d |  |
| 26 | 1.3.1 | **Agendamento de Formação de Pessoal:** | 3d | 2023-12-18 | 2023-12-20 | 24 | 2d |  |
| 27 |  | Definição de datas, horários e local para as sessões de formação. | 3d | 2023-12-18 | 2023-12-20 | 24 | 2d | start no earlier than 2023-12-18 |
| 28 | 1.3.2 | **Formação da equipa** | 8d | 2023-12-21 | 2023-12-29 | 26 | 0d |  |
| 29 |  | Desenvolvimento de material de formação, como manuais, guias e apresentações. | 2d | 2023-12-21 | 2023-12-22 | 27 | 2d | finish no earlier than 2023-12-22 |
| 30 |  | Formação da equipa de manutenção do sistema para garantir que esta possa gerir e desenvolver a solução com eficiência. | 4d | 2023-12-26 | 2023-12-29 | 29 | 0d | finish no earlier than 2023-12-29 |
| 31 | 1.4 | **Desenvolvimento, Implementação e Entrega do Projeto:** | 175d | 2024-01-02 A | 2024-06-30 | 23, 24 | 0d |  |
| 32 | 1.4.1 | **Design e Arquitetura** | 23d | 2024-01-02 | 2024-01-24 | 28 | 14.12d |  |
| 33 |  | Desenvolvimento da arquitetura do sistema, design de interface do utilizador e especificação técnica. | 8d | 2024-01-02 | 2024-01-11 | 30 | 14.12d | start no earlier than 2024-01-01 |
| 34 |  | Início da primeira iteração ágil (sprint) com um foco específico em funcionalidades priorizadas. | 9d | 2024-01-12 | 2024-01-24 | 33 | 14.12d | finish no earlier than 2024-01-24 |
| 35 | 1.4.2 | **Desenvolvimento Back-End** | 39d | 2024-01-25 A | 2024-03-04 | 30 | 1.45d |  |
| 36 |  | Implementação das funcionalidades de servidor, banco de dados e lógica de negócios. | 3d | 2024-01-25 | 2024-01-27 | 34 | 14.12d |  |
| 37 |  | Início de nova iteração ágil, com base nas lições aprendidas na sprint anterior. | 3.88d | 2024-01-28 | 2024-01-31 | 36 | 14.12d |  |
| 38 |  | Sprints de Forma Ágil | 14d | 2024-02-16 | 2024-03-04 | 37 | 0d | finish no earlier than 2024-03-04 |
| 39 | 1.4.3 | **Desenvolvimento Front-end** | 16.75d | 2024-03-05 | 2024-03-21 | 35 | 1.45d |  |
| 40 |  | Implementação da parte visual do site, incluindo layout, design gráfico e interatividade. | 3d | 2024-03-05 | 2024-03-07 | 38 | 1.45d | start no earlier than 2024-02-13 |
| 41 |  | Continuação da implementação ágil com novas funcionalidades a serem desenvolvidas. | 3d | 2024-03-08 | 2024-03-10 | 40 | 1.45d | start no earlier than 2024-02-16 |
| 42 |  | Nova iteração ágil com ênfase nas funcionalidades restantes. | 8.75d | 2024-03-11 | 2024-03-21 | 41 | 1.45d | finish no earlier than 2024-02-29 |
| 43 | 1.4.4 | **Integração de Sistemas** | 28.75d | 2024-03-21 | 2024-04-20 | 39 | 1.45d |  |
| 44 |  | Integração das funcionalidades desenvolvidas em relação ao sistema principal. | 22.25d | 2024-03-21 | 2024-04-20 | 42 | 1.45d | finish no earlier than 2024-03-19 |
| 45 | 1.4.5 | **Testes Unitários** | 5.3d | 2024-04-20 | 2024-04-26 | 43 | 1.45d |  |
| 46 |  | Realização de testes de unidade em cada componente do sistema para garantir o funcionamento correto. | 3.3d | 2024-04-20 | 2024-04-26 | 44 | 1.45d | start no earlier than 2024-03-20 |
| 47 | 1.4.6 | **Testes de Integração** | 15d | 2024-04-26 | 2024-05-12 | 45 | 1.45d |  |
| 48 |  | Procuram garantir que todas as funcionalidades foram implementadas com sucesso. | 5d | 2024-04-26 | 2024-05-02 | 46 | 1.45d | start no earlier than 2024-04-04 |
| 49 |  | Conclusão do desenvolvimento, incluindo ajustes finais e otimizações. | 10d | 2024-05-02 | 2024-05-12 | 48 | 1.45d | finish no earlier than 2024-04-26 |
| 50 | 1.4.7 | **Testes de Regressão** | 20.75d | 2024-05-12 | 2024-06-03 | 47 | 1.45d |  |
| 51 |  | Testes para garantir que as alterações ou correções não afetaram negativamente as funcionalidades existentes. | 18.75d | 2024-05-12 | 2024-06-01 | 49 | 1.45d | start no earlier than 2024-04-29 |
| 52 |  | Realização de testes com a participação do cliente para garantir que os requisitos sejam atendidos. | 2d | 2024-06-01 | 2024-06-03 | 51 | 1.45d | finish no earlier than 2024-05-13 |
| 53 | 1.4.8 | **Ajustes e Otimização de Escalabilidade e Segurança** | 10d | 2024-06-03 | 2024-06-14 | 50 | 1.45d |  |
| 54 |  | Avaliação de carga e escalabilidade. | 4d | 2024-06-03 | 2024-06-07 | 52 | 1.45d | finish no earlier than 2024-05-17 |
| 55 |  | Avaliação da segurança do sistema para identificar vulnerabilidades e riscos de segurança. | 4d | 2024-06-07 | 2024-06-12 | 54 | 1.45d | finish no earlier than 2024-05-23 |
| 56 |  | Identificação e correção de erros e defeitos identificados durante as alíneas anteriores. | 2d | 2024-06-12 | 2024-06-14 | 55 | 1.45d | start no earlier than 2024-05-24 |
| 57 | 1.4.9 | **Testes de Aceitação do Cliente** | 6d | 2024-06-14 | 2024-06-20 | 53 | 1.45d |  |
| 58 |  | Testes conduzidos com a participação do cliente para garantir que os requisitos sejam atendidos. | 4d | 2024-06-14 | 2024-06-18 | 56 | 1.45d | start no earlier than 2024-05-28 |
| 59 |  | Realização de testes abrangentes e avaliação geral do sistema antes da entrega. | 2d | 2024-06-18 | 2024-06-20 | 58 | 1.45d | finish no earlier than 2024-06-05 |
| 60 | 1.4.10 | **Preparação para Entrega** | 6d | 2024-06-20 | 2024-06-26 | 57 | 1.45d |  |
| 61 |  | Preparação para a entrega do sistema, incluindo a documentação. | 4d | 2024-06-20 | 2024-06-24 | 59 | 1.45d | finish no earlier than 2024-06-11 |
| 62 |  | Revisão e finalização de toda a documentação necessária para a entrega, incluindo manuais de utilizador, documentação técnica e outros materiais. | 2d | 2024-06-24 | 2024-06-26 | 61 | 1.45d | finish no earlier than 2024-06-14 |
| 63 | 1.4.11 | **Entrega do Projeto** | 4.45d | 2024-06-26 | 2024-06-30 | 60 | 0d |  |
| 64 |  | Conclusão da fase de desenvolvimento e implementação, com a entrega da solução ao cliente. | 1d | 2024-06-26 | 2024-06-27 | 62 | 1.45d | finish no earlier than 2024-06-17 |
| 65 |  | Acompanhamento do cliente para garantir que este saiba como usar efetivamente a solução. | 0d | 2024-06-28 | 2024-06-28 | 64 | 1d | start no earlier than 2024-06-28 |
| 66 |  | Obtenção da aprovação formal do cliente para a solução entregue. | 0d | 2024-06-29 | 2024-06-29 | 65 | 0d | start no earlier than 2024-06-29 |
| 67 |  | Finalização de todas as atividades do projeto, incluindo a documentação de encerramento e a entrega de todos os artefactos ao cliente. Finalizado até 01 de Julho de 2024 | 2d | 2024-06-29 | 2024-06-30 | 66 | 0d | finish no earlier than 2024-06-30 |

## Version 2 (data date 2023-08-01, saved 2024-01-19, file MS Project - Eletroártica - Projeto Final de GP - 50%.mpp)

Last finish stays 2024-06-30. Complete tasks 0 → 17.

Changed:

| ID | Task | Start | Finish | Duration | Complete | Total float | Other |
| --- | --- | --- | --- | --- | --- | --- | --- |
| 1 | **Projeto de Desenvolvimento de um Site - Eletroártica:** |  |  |  | 0% → 50% |  |  |
| 2 | **Requisitos e Plano de Projeto:** | 2023-08-08 A | 2023-12-07 A |  | 0% → 100% | 7d → none | resources none → Gestor do Projeto - Pedro Oliveira; Analistas de Requisitos - Rita Pereira [75%]; Especialistas em Integração de Sistemas - Emily Mitchell; Desenvolvedores Back-End 01 (Chefe) - Miguel Sousa; Desenvolvedores Front-End 01 (Chefe) - João Costa |
| 3 | **Levantamento de Requisitos** | 2023-08-08 A | 2023-08-08 A |  | 0% → 100% | 28.38d → none |  |
| 4 | Coleta de requisitos detalhados do cliente, incluindo funcionalidades, integrações e requisitos de segurança. | 2023-08-08 A | 2023-08-08 A |  | 0% → 100% | 28.38d → none |  |
| 5 | **Análise Inicial de Requisitos** | 2023-08-17 A | 2023-08-25 A |  | 0% → 100% | 19.88d → none |  |
| 6 | Analise de requisitos iniciais enviados pelo cliente para entender as necessidades do projeto. | 2023-08-17 A | 2023-08-25 A |  | 0% → 100% | 19.88d → none |  |
| 7 | **Definição de Requisitos Prioritários** | 2023-08-28 A | 2023-09-01 A |  | 0% → 100% | 17.88d → none |  |
| 8 | Identificação e priorização dos requisitos específicos a serem abordados. | 2023-08-28 A | 2023-09-01 A |  | 0% → 100% | 17.88d → none |  |
| 9 | **Definição da Estrutura** | 2023-09-04 A | 2023-09-13 A |  | 0% → 100% | 15d → none |  |
| 10 | Detalhamento do projeto, incluindo funcionalidades, recursos e limitações. | 2023-09-04 A | 2023-09-13 A |  | 0% → 100% | 15d → none |  |
| 11 | **Identificação da Partes Interessadas** | 2023-09-14 A | 2023-09-27 A |  | 0% → 100% | 15d → none |  |
| 12 | Identificação das partes interessadas no projeto, incluindo o cliente e outros envolvidos. | 2023-09-14 A | 2023-09-27 A |  | 0% → 100% | 15d → none |  |
| 13 | **Estabelecimento do Orçamento** | 2023-10-02 A | 2023-10-11 A |  | 0% → 100% | 11d → none | resources none → Gestor do Projeto - Pedro Oliveira |
| 14 | Definição do orçamento do projeto com base nos requisitos do cliente. | 2023-10-02 A | 2023-10-11 A |  | 0% → 100% | 11d → none | resources Computadores (com monitor, mousse, etc...) [1 Unidade]; Eletricidade [1 Mensal]; Equipamento de Escritório - Geral [1 Unidade]; Ferramenta de Gestão de Sistemas [0.1%]; Gestor do Projeto - Pedro Oliveira; Serviço de Internet - Empresas [1 Mensal] → Computadores (com monitor, mousse, etc...) [1 Unidade]; Eletricidade [1 Mensal]; Equipamento de Escritório - Geral [1 Unidade]; Ferramenta de Gestão de Sistemas [0.1%]; Serviço de Internet - Empresas [1 Mensal] |
| 15 | **Elaboração do Plano de Projeto** | 2023-10-12 A | 2023-10-27 A |  | 0% → 100% | 11d → none |  |
| 16 | Criação de um plano de projeto detalhado que inclui cronograma, orçamento e recursos. | 2023-10-12 A | 2023-10-27 A |  | 0% → 100% | 11d → none | resources Computadores (com monitor, mousse, etc...) [1.17 Unidade]; Eletricidade [1.17 Mensal]; Equipamento de Escritório - Geral [1.17 Unidade]; Ferramenta de Gestão de Sistemas [0.1%]; Serviço de Internet - Empresas [1.17 Mensal] → Computadores (com monitor, mousse, etc...) [1 Unidade]; Eletricidade [1 Mensal]; Equipamento de Escritório - Geral [1 Unidade]; Ferramenta de Gestão de Sistemas [0.1%]; Serviço de Internet - Empresas [1 Mensal] |
| 17 | **Elaboração de Documentação Inicial** | 2023-10-30 A | 2023-11-08 A |  | 0% → 100% | 9d → none |  |
| 18 | Início da criação da documentação necessária para a entrega da solução. | 2023-10-30 A | 2023-11-08 A |  | 0% → 100% | 9d → none |  |
| 19 | **Desenvolvimento do Plano de Projeto** | 2023-11-09 A | 2023-11-24 A |  | 0% → 100% | 9d → none |  |
| 20 | Revisão do plano de projeto com a equipa e ajustes conforme necessário. | 2023-11-09 A | 2023-11-24 A |  | 0% → 100% | 9d → none |  |
| 21 | **Submissão do Plano de Projeto** | 2023-11-27 A | 2023-12-07 A |  | 0% → 100% | 7d → none |  |
| 22 | Submissão do plano de projeto ao cliente para revisão e aprovação. | 2023-11-27 A | 2023-12-07 A |  | 0% → 100% | 7d → none |  |
| 23 | **Aprovação do Plano de Projeto:** | 2023-12-15 → 2023-12-11 A (-4d) | 2023-12-15 A | 0d → 5d | 0% → 100% | 0d → none |  |
| 24 | Recebimento da aprovação formal do cliente sobre o plano de projeto. | 2023-12-15 → 2023-12-11 A (-4d) | 2023-12-15 A | 0d → 5d | 0% → 100% | 0d → none |  |
| 25 | **Formação de Pessoal:** |  |  |  | 0% → 99% |  |  |
| 26 | **Agendamento de Formação de Pessoal:** | 2023-12-18 A | 2023-12-20 A |  | 0% → 100% | 2d → none | resources none → Gestor do Projeto - Pedro Oliveira |
| 27 | Definição de datas, horários e local para as sessões de formação. | 2023-12-18 A | 2023-12-20 A |  | 0% → 100% | 2d → none |  |
| 28 | **Formação da equipa** | 2023-12-21 A | 2023-12-29 A |  | 0% → 100% | 0d → none |  |
| 29 | Desenvolvimento de material de formação, como manuais, guias e apresentações. | 2023-12-21 A | 2023-12-22 A |  | 0% → 100% | 2d → none |  |
| 30 | Formação da equipa de manutenção do sistema para garantir que esta possa gerir e desenvolver a solução com eficiência. | 2023-12-26 A | 2023-12-29 A |  | 0% → 100% | 0d → none |  |
| 31 | **Desenvolvimento, Implementação e Entrega do Projeto:** |  |  |  | 0% → 15% |  |  |
| 32 | **Design e Arquitetura** | 2024-01-02 A | 2024-01-24 A |  | 0% → 100% | 14.12d → none |  |
| 33 | Desenvolvimento da arquitetura do sistema, design de interface do utilizador e especificação técnica. | 2024-01-02 A | 2024-01-11 A |  | 0% → 100% | 14.12d → none |  |
| 34 | Início da primeira iteração ágil (sprint) com um foco específico em funcionalidades priorizadas. | 2024-01-12 A | 2024-01-24 A |  | 0% → 100% | 14.12d → none | resources Analistas de Requisitos - Rita Pereira [75%]; Eletricidade [1 Mensal]; Equipamento de Escritório - Geral [1 Unidade]; Serviço de Internet - Empresas [1 Mensal] → Eletricidade [1 Mensal]; Equipamento de Escritório - Geral [1 Unidade]; Serviço de Internet - Empresas [1 Mensal] |
| 35 | **Desenvolvimento Back-End** |  |  |  | 0% → 14% |  |  |
| 36 | Implementação das funcionalidades de servidor, banco de dados e lógica de negócios. | 2024-01-25 A | 2024-01-27 A |  | 0% → 100% | 14.12d → none |  |
| 43 | **Integração de Sistemas** |  |  |  |  |  | resources Especialistas em Integração de Sistemas - Emily Mitchell → none |
| 44 | Integração das funcionalidades desenvolvidas em relação ao sistema principal. |  |  | 22.25d → 13d |  |  | resources Computadores (com monitor, mousse, etc...) [1 Unidade]; Eletricidade [1 Mensal]; Equipamento de Escritório - Geral [1 Unidade]; Serviço de Internet - Empresas [1 Mensal] → Computadores (com monitor, mousse, etc...) [1 Unidade]; Eletricidade [1 Mensal]; Equipamento de Escritório - Geral [1 Unidade]; Especialistas em Integração de Sistemas - Emily Mitchell; Serviço de Internet - Empresas [1 Mensal] |
| 47 | **Testes de Integração** |  |  |  |  |  | resources Especialistas em Integração de Sistemas - Emily Mitchell → none |

## Version 3 (data date 2023-08-01, saved 2024-01-19, file MS Project - Eletroártica - Projeto Final de GP - 100%.mpp)

Last finish stays 2024-06-30. Complete tasks 17 → 37.

Changed:

| ID | Task | Start | Finish | Duration | Complete | Total float | Other |
| --- | --- | --- | --- | --- | --- | --- | --- |
| 1 | **Projeto de Desenvolvimento de um Site - Eletroártica:** |  |  |  | 50% → 99% |  |  |
| 31 | **Desenvolvimento, Implementação e Entrega do Projeto:** |  |  |  | 15% → 99% |  |  |
| 35 | **Desenvolvimento Back-End** |  | 2024-03-04 A |  | 14% → 100% | 1.45d → none |  |
| 37 | Início de nova iteração ágil, com base nas lições aprendidas na sprint anterior. | 2024-01-28 A | 2024-01-31 A |  | 0% → 100% | 14.12d → none |  |
| 38 | Sprints de Forma Ágil | 2024-02-16 A | 2024-03-04 A |  | 0% → 100% | 0d → none |  |
| 39 | **Desenvolvimento Front-end** | 2024-03-05 A | 2024-03-21 A |  | 0% → 100% | 1.45d → none |  |
| 40 | Implementação da parte visual do site, incluindo layout, design gráfico e interatividade. | 2024-03-05 A | 2024-03-07 A |  | 0% → 100% | 1.45d → none |  |
| 41 | Continuação da implementação ágil com novas funcionalidades a serem desenvolvidas. | 2024-03-08 A | 2024-03-10 A |  | 0% → 100% | 1.45d → none |  |
| 42 | Nova iteração ágil com ênfase nas funcionalidades restantes. | 2024-03-11 A | 2024-03-21 A |  | 0% → 100% | 1.45d → none |  |
| 43 | **Integração de Sistemas** | 2024-03-21 A | 2024-04-20 A |  | 0% → 100% | 1.45d → none | resources none → Especialistas em Integração de Sistemas - Emily Mitchell |
| 44 | Integração das funcionalidades desenvolvidas em relação ao sistema principal. | 2024-03-21 A | 2024-04-20 A | 13d → 22.25d | 0% → 100% | 1.45d → none | resources Computadores (com monitor, mousse, etc...) [1 Unidade]; Eletricidade [1 Mensal]; Equipamento de Escritório - Geral [1 Unidade]; Especialistas em Integração de Sistemas - Emily Mitchell; Serviço de Internet - Empresas [1 Mensal] → Computadores (com monitor, mousse, etc...) [1 Unidade]; Eletricidade [1 Mensal]; Equipamento de Escritório - Geral [1 Unidade]; Serviço de Internet - Empresas [1 Mensal] |
| 45 | **Testes Unitários** | 2024-04-20 A | 2024-04-26 A |  | 0% → 100% | 1.45d → none |  |
| 46 | Realização de testes de unidade em cada componente do sistema para garantir o funcionamento correto. | 2024-04-20 A | 2024-04-26 A |  | 0% → 100% | 1.45d → none |  |
| 47 | **Testes de Integração** | 2024-04-26 A | 2024-05-12 A |  | 0% → 100% | 1.45d → none | resources none → Especialistas em Integração de Sistemas - Emily Mitchell |
| 48 | Procuram garantir que todas as funcionalidades foram implementadas com sucesso. | 2024-04-26 A | 2024-05-02 A |  | 0% → 100% | 1.45d → none |  |
| 49 | Conclusão do desenvolvimento, incluindo ajustes finais e otimizações. | 2024-05-02 A | 2024-05-12 A |  | 0% → 100% | 1.45d → none | resources Computadores (com monitor, mousse, etc...) [1 Unidade]; Eletricidade [1 Mensal]; Equipamento de Escritório - Geral [1 Unidade]; Ferramenta de Base de Dados [0.1%]; Ferramenta de Desenvolvimento de Código [0.1%]; Ferramenta de Gestão de Sistemas [0.1%]; Ferramentas de Teste [0.1%]; Serviço de Hospedagem [0.1%]; Serviço de Internet - Empresas [1 Mensal]; Software de Sistema Integrado [0.1%] → Computadores (com monitor, mousse, etc...) [1 Unidade]; Eletricidade [1 Mensal]; Equipamento de Escritório - Geral [1 Unidade]; Especialistas em Integração de Sistemas - Emily Mitchell [75%]; Ferramenta de Base de Dados [0.1%]; Ferramenta de Desenvolvimento de Código [0.1%]; Ferramenta de Gestão de Sistemas [0.1%]; Ferramentas de Teste [0.1%]; Serviço de Hospedagem [0.1%]; Serviço de Internet - Empresas [1 Mensal]; Software de Sistema Integrado [0.1%] |
| 50 | **Testes de Regressão** | 2024-05-12 A | 2024-06-03 A |  | 0% → 100% | 1.45d → none |  |
| 51 | Testes para garantir que as alterações ou correções não afetaram negativamente as funcionalidades existentes. | 2024-05-12 A | 2024-06-01 A |  | 0% → 100% | 1.45d → none |  |
| 52 | Realização de testes com a participação do cliente para garantir que os requisitos sejam atendidos. | 2024-06-01 A | 2024-06-03 A |  | 0% → 100% | 1.45d → none |  |
| 53 | **Ajustes e Otimização de Escalabilidade e Segurança** | 2024-06-03 A | 2024-06-14 A |  | 0% → 100% | 1.45d → none |  |
| 54 | Avaliação de carga e escalabilidade. | 2024-06-03 A | 2024-06-07 A |  | 0% → 100% | 1.45d → none |  |
| 55 | Avaliação da segurança do sistema para identificar vulnerabilidades e riscos de segurança. | 2024-06-07 A | 2024-06-12 A |  | 0% → 100% | 1.45d → none |  |
| 56 | Identificação e correção de erros e defeitos identificados durante as alíneas anteriores. | 2024-06-12 A | 2024-06-14 A |  | 0% → 100% | 1.45d → none |  |
| 57 | **Testes de Aceitação do Cliente** | 2024-06-14 A | 2024-06-20 A |  | 0% → 100% | 1.45d → none |  |
| 58 | Testes conduzidos com a participação do cliente para garantir que os requisitos sejam atendidos. | 2024-06-14 A | 2024-06-18 A |  | 0% → 100% | 1.45d → none |  |
| 59 | Realização de testes abrangentes e avaliação geral do sistema antes da entrega. | 2024-06-18 A | 2024-06-20 A |  | 0% → 100% | 1.45d → none |  |
| 60 | **Preparação para Entrega** | 2024-06-20 A | 2024-06-26 A |  | 0% → 100% | 1.45d → none |  |
| 61 | Preparação para a entrega do sistema, incluindo a documentação. | 2024-06-20 A | 2024-06-24 A |  | 0% → 100% | 1.45d → none |  |
| 62 | Revisão e finalização de toda a documentação necessária para a entrega, incluindo manuais de utilizador, documentação técnica e outros materiais. | 2024-06-24 A | 2024-06-26 A |  | 0% → 100% | 1.45d → none |  |
| 63 | **Entrega do Projeto** | 2024-06-26 A |  |  | 0% → 99% |  |  |
| 64 | Conclusão da fase de desenvolvimento e implementação, com a entrega da solução ao cliente. | 2024-06-26 A | 2024-06-27 A |  | 0% → 100% | 1.45d → none |  |
| 65 | Acompanhamento do cliente para garantir que este saiba como usar efetivamente a solução. |  |  |  |  | 1d → 2d | constraint start no earlier than 2024-06-28 → finish no earlier than 2024-06-28 |
| 66 | Obtenção da aprovação formal do cliente para a solução entregue. |  |  |  |  | 0d → 1d | constraint start no earlier than 2024-06-29 → finish no earlier than 2024-06-29 |
| 67 | Finalização de todas as atividades do projeto, incluindo a documentação de encerramento e a entrega de todos os artefactos ao cliente. Finalizado até 01 de Julho de 2024 | 2024-06-29 A | 2024-06-30 A |  | 0% → 100% | 0d → none |  |
